# metric-sys-wbs

Schedule from MS Project, 2020-05-25 to 2020-11-24, A marks actual dates.

## Calendars

- 标准: Mon-Fri 08:00-12:00, 13:00-17:00; Sat-Sun off.

## Resources

| Resource |
| --- |
| 魏亚远 |
| 肖燏 |
| 宋超群 |
| 戴桂春 |

## Schedule

| ID | WBS | Task | Type | Duration | Start | Finish | Predecessors | Complete | Remaining | Total slack | Free slack | Constraint | Resources | Work | Actual work |
| --- | --- | --- | --- | --- | --- | --- | --- | --- | --- | --- | --- | --- | --- | --- | --- |
| 1 | 1 | Web应用技术架构选型 |  | 2d | 2020-05-26 | 2020-05-27 |  |  |  | 154d |  | start no earlier than 2020-05-26 | 魏亚远; 宋超群 | 24h |  |
| 2 | 2 | 确定前端页面样式规范 | manual | 1d? | 2020-05-25 | 2020-05-25 |  |  |  |  |  | finish no earlier than 2020-05-28 |  |  |  |
| 3 | 3 | 完成物理数据模型 |  | 2d | 2020-05-26 A | 2020-05-27 A |  | 100% |  |  |  | start no earlier than 2020-05-26 | 肖燏 | 16h | 16h |
| 4 | 4 | 搭建Web应用开发环境 |  | 2d? | 2020-05-28 A | 2020-05-29 A | 1 | 100% |  |  |  | start no earlier than 2020-05-28 | 魏亚远 | 16h | 16h |
| 5 | 5 | **Web应用页面原型** |  | 6d? | 2020-05-28 A | 2020-06-04 |  | 96% | 0.23d? |  |  |  |  | 200h | 200h |
| 6 | 5.1 | 数据查询分析 |  | 5d | 2020-05-28 A | 2020-06-03 A |  | 100% |  |  |  |  | 肖燏 | 40h | 40h |
| 7 | 5.2 | 指标体系管理 |  | 5d | 2020-05-28 A | 2020-06-03 A |  | 100% |  |  |  |  | 肖燏 | 40h | 40h |
| 8 | 5.3 | 数据权限管理 |  | 5d | 2020-05-28 A | 2020-06-03 A |  | 100% |  |  |  |  | 宋超群; 肖燏 | 40h | 40h |
| 9 | 5.4 | 数据接口管理 |  | 5d | 2020-05-28 A | 2020-06-03 A |  | 100% |  |  |  |  | 肖燏 | 40h | 40h |
| 10 | 5.5 | 系统管理 |  | 5d | 2020-05-28 A | 2020-06-03 A |  | 100% |  |  |  |  | 肖燏 | 40h | 40h |
| 11 | 5.6 | 原型评审（第一轮） |  | 1d | 2020-06-04 | 2020-06-04 | 6, 7, 8, 9, 10 |  |  | 150d |  |  |  |  |  |
| 12 | 6 | **系统测试** |  | 132d | 2020-05-25 A | 2020-11-24 |  | 6% | 123.75d | 0d |  |  |  | 240h | 16h |
| 13 | 6.1 | **测试数据开发** |  | 13d | 2020-05-25 A | 2020-06-10 |  | 50% | 6.5d | 119d |  |  |  | 16h | 16h |
| 14 | 6.1.1 | 测试管理数据开发 | manual | 2d | 2020-06-09 A | 2020-06-10 A |  | 100% |  |  |  |  | 肖燏 | 16h | 16h |
| 15 | 6.1.2 | 测试指标数据开发 |  | 2d | 2020-05-25 | 2020-05-26 |  |  |  | 155d |  |  |  |  |  |
| 16 | 6.2 | **测试用例开发** |  | 132d | 2020-05-25 | 2020-11-24 |  |  |  | 0d |  |  |  | 224h |  |
| 17 | 6.2.1 | Web应用测试案例开发 |  | 10d | 2020-11-11 | 2020-11-24 | 22 |  |  | 0d |  |  | 魏亚远 | 80h |  |
| 18 | 6.2.2 | 后台服务测试案例开发 |  | 10d | 2020-09-18 | 2020-10-01 | 57 |  |  | 38d |  |  | 肖燏 | 80h |  |
| 19 | 6.2.3 | **测试环境开发** |  | 4d | 2020-05-25 | 2020-05-28 |  |  |  | 0d |  |  |  | 64h |  |
| 20 | 6.2.3.1 | Web应用测试环境开发（Docker） | manual | 4d | 2020-05-25 | 2020-05-28 |  |  |  |  |  |  | 肖燏 | 32h |  |
| 21 | 6.2.3.2 | 后台服务测试环境开发（Docker） | manual | 4d | 2020-05-25 | 2020-05-28 |  |  |  |  |  |  | 肖燏 | 32h |  |
| 22 | 7 | **Web应用开发** |  | 116d | 2020-06-02 A | 2020-11-10 |  | 3% | 112.3d | 0d |  |  | 魏亚远 | 3712h | 57.16h |
| 23 | 7.1 | 系统首页 |  | 4d | 2020-06-02 A | 2020-06-05 |  | 40% | 2.4d | 2.1d | 0d | start no earlier than 2020-06-02 | 魏亚远 | 32h | 12.8h |
| 24 | 7.2 | 指标目录树组件开发 |  | 6d | 2020-06-08 A | 2020-06-15 | 23 | 35% | 3.9d | 0d |  |  | 魏亚远 | 48h | 16.8h |

Notes:
- 2: 参照数研Web界面规范

| ID | WBS | Task | Duration | Start | Finish | Predecessors | Total slack | Resources | Work |
| --- | --- | --- | --- | --- | --- | --- | --- | --- | --- |
| 25 | 7.3 | **系统管理** | 73d | 2020-06-16 | 2020-09-24 |  | 0d | 魏亚远 | 872h |
| 26 | 7.3.1 | 系统日志分析 | 4d | 2020-09-11 | 2020-09-16 | 56 | 0d | 魏亚远 | 32h |
| 27 | 7.3.2 | 用户角色管理 | 5d | 2020-06-16 | 2020-06-22 | 24 | 0d | 魏亚远 | 40h |
| 28 | 7.3.3 | 指标数据源管理 | 5d | 2020-06-23 | 2020-06-29 | 27 | 0d | 魏亚远 | 40h |
| 29 | 7.3.4 | **指标仓库管理** | 8d | 2020-06-30 | 2020-07-09 |  | 0d | 魏亚远 | 128h |
| 30 | 7.3.4.1 | 指标维度维护 | 4d | 2020-06-30 | 2020-07-03 | 28 | 0d | 魏亚远 | 32h |
| 31 | 7.3.4.2 | 指标主表维护 | 4d | 2020-07-06 | 2020-07-09 | 30 | 0d | 魏亚远 | 32h |
| 32 | 7.3.5 | 系统运行报告 | 6d | 2020-09-17 | 2020-09-24 | 26 | 0d | 魏亚远 | 48h |
| 33 | 7.4 | **指标查询分析** | 64d | 2020-08-13 | 2020-11-10 |  | 0d | 魏亚远 | 1216h |
| 34 | 7.4.1 | **指标数据查询** | 11d | 2020-08-13 | 2020-08-27 |  | 0d | 魏亚远 | 176h |
| 35 | 7.4.1.1 | 常用查询管理 | 4d | 2020-08-13 | 2020-08-18 | 51 | 0d | 魏亚远 | 32h |
| 36 | 7.4.1.2 | 指标数据导出 | 3d | 2020-08-19 | 2020-08-21 | 35 | 0d | 魏亚远 | 24h |
| 37 | 7.4.1.3 | 一般指标查询 | 4d | 2020-08-24 | 2020-08-27 | 36 | 0d | 魏亚远 | 32h |
| 38 | 7.4.2 | **指标仪表盘** | 33d | 2020-09-25 | 2020-11-10 |  | 0d | 魏亚远 | 528h |
| 39 | 7.4.2.1 | 仪表盘展示 | 10d | 2020-09-25 | 2020-10-08 | 32 | 0d | 魏亚远 | 80h |
| 40 | 7.4.2.2 | 仪表盘页面管理 | 5d | 2020-10-09 | 2020-10-15 | 39 | 0d | 魏亚远 | 40h |
| 41 | 7.4.2.3 | 仪表盘页面内容管理 | 8d | 2020-10-16 | 2020-10-27 | 40 | 0d | 魏亚远 | 64h |
| 42 | 7.4.2.4 | 图表管理 | 10d | 2020-10-28 | 2020-11-10 | 41 | 0d | 魏亚远 | 80h |
| 43 | 7.5 | **指标体系管理** | 22d | 2020-07-10 | 2020-08-10 |  | 0d | 魏亚远 | 448h |
| 44 | 7.5.1 | 指标目录维护 | 4d | 2020-07-10 | 2020-07-15 | 31 | 0d | 魏亚远 | 32h |
| 45 | 7.5.2 | **指标维护** | 12d | 2020-07-16 | 2020-07-31 |  | 0d | 魏亚远 | 192h |
| 46 | 7.5.2.1 | 指标查询 | 4d | 2020-07-16 | 2020-07-21 | 44 | 0d | 魏亚远 | 32h |
| 47 | 7.5.2.2 | 基本指标维护 | 4d | 2020-07-22 | 2020-07-27 | 46 | 0d | 魏亚远 | 32h |
| 48 | 7.5.2.3 | 衍生指标维护 | 4d | 2020-07-28 | 2020-07-31 | 47 | 0d | 魏亚远 | 32h |
| 49 | 7.5.3 | 指标目录审核 | 3d | 2020-08-03 | 2020-08-05 | 48 | 0d | 魏亚远 | 24h |
| 50 | 7.5.4 | 指标审核 | 3d | 2020-08-06 | 2020-08-10 | 49 | 0d | 魏亚远 | 24h |
| 51 | 7.6 | 数据权限管理 | 2d | 2020-08-11 | 2020-08-12 | 50 | 0d | 魏亚远 | 16h |

| ID | WBS | Task | Duration | Start | Finish | Predecessors | Total slack | Free slack | Resources | Work |
| --- | --- | --- | --- | --- | --- | --- | --- | --- | --- | --- |
| 52 | 7.7 | **指标接口管理** | 10d | 2020-08-28 | 2020-09-10 |  | 0d |  | 魏亚远 | 216h |
| 53 | 7.7.1 | **指标接口维护** | 7d | 2020-08-28 | 2020-09-07 |  | 0d |  | 魏亚远 | 112h |
| 54 | 7.7.1.1 | 指标接口查询 | 4d | 2020-08-28 | 2020-09-02 | 37 | 0d |  | 魏亚远 | 32h |
| 55 | 7.7.1.2 | 指标接口查询条件设置 | 3d | 2020-09-03 | 2020-09-07 | 54 | 0d |  | 魏亚远 | 24h |
| 56 | 7.7.2 | 指标接口审核 | 3d | 2020-09-08 | 2020-09-10 | 55 | 0d |  | 魏亚远 | 24h |
| 57 | 8 | **后台服务及核心算法开发** | 68d | 2020-06-16 | 2020-09-17 |  |  |  | 肖燏 | 1408h |
| 58 | 8.1 | **批量指标加载** | 22d | 2020-06-16 | 2020-07-15 |  | 38d |  | 肖燏 | 352h |
| 59 | 8.1.1 | 计算指标加载顺序 | 3d | 2020-06-16 | 2020-06-18 |  | 38d | 0d | 肖燏 | 24h |
| 60 | 8.1.2 | 基础指标加载 | 7d | 2020-06-19 | 2020-06-29 | 59 | 38d | 0d | 肖燏 | 56h |
| 61 | 8.1.3 | 衍生指标加载 | 6d | 2020-06-30 | 2020-07-07 | 60 | 38d | 0d | 肖燏 | 48h |
| 62 | 8.1.4 | 指标数据汇总 | 6d | 2020-07-08 | 2020-07-15 | 61 | 38d | 0d | 肖燏 | 48h |
| 63 | 8.2 | **流式指标加载** | 18d | 2020-07-16 | 2020-08-10 |  | 38d |  | 肖燏 | 288h |
| 64 | 8.2.1 | 基础指标加载 | 7d | 2020-07-16 | 2020-07-24 | 62 | 38d | 0d | 肖燏 | 56h |
| 65 | 8.2.2 | 衍生指标加载 | 6d | 2020-07-27 | 2020-08-03 | 64 | 38d | 0d | 肖燏 | 48h |
| 66 | 8.2.3 | 指标数据汇总 | 5d | 2020-08-04 | 2020-08-10 | 65 | 38d | 0d | 肖燏 | 40h |
| 67 | 8.3 | 指标数据同步 | 8d | 2020-08-11 | 2020-08-20 | 66 | 38d | 0d | 肖燏 | 64h |
| 68 | 8.4 | 指标接口服务 | 10d | 2020-08-21 | 2020-09-03 | 67 | 38d | 0d | 肖燏 | 80h |
| 69 | 8.5 | 指标数据访问权限控制服务 | 10d | 2020-09-04 | 2020-09-17 | 68 | 38d |  | 肖燏 | 80h |

Notes:
- 67: 持久化库和内存库之间的同步
